# 01-RefaccionariaNVW_WBS

How a schedule from MS Project changed from version to version. A marks actual dates.

## Version 1 (saved 2016-07-02)

Note of the change: actualizando directorio

| ID | WBS | Task | Duration | Start | Finish | Predecessors | Total float |
| --- | --- | --- | --- | --- | --- | --- | --- |
| 1 | 1 | **Plan preliminar** | 1.75d | 2016-05-02 09:00 | 2016-05-03 17:00 |  |  |
| 2 |  | Generar WBS del producto inicial | 4h | 2016-05-02 09:00 | 2016-05-02 13:00 |  | 0d |
| 3 |  | Generar project charter | 1h | 2016-05-02 15:00 | 2016-05-02 16:00 | 2 | 0d |
| 4 |  | Plan preliminar del proyecto | 8h | 2016-05-02 16:00 | 2016-05-03 16:00 | 3 | 0d |
| 5 |  | Matriz de comunicación | 1h | 2016-05-03 16:00 | 2016-05-03 17:00 | 4 | 0d |
| 6 |  | Entrega de WBS del producto inicial, project charter, plan preliminar y matriz de comunicación | 0d | 2016-05-02 09:00 | 2016-05-02 09:00 |  | 1.75d |
| 7 | 2 | **Nombre del proyecto** | 72.25d | 2016-05-03 17:00 | 2016-08-12 09:00 | 1 | 0d |
| 8 |  | Formación del equipo | 1h | 2016-05-03 17:00 | 2016-05-03 18:00 | 5 | 0.56d |
| 9 | 2.2 | **Iteración 1** | 26.31d | 2016-05-03 18:00 | 2016-06-09 10:30 |  | 25.56d |
| 10 | 2.2.1 | **Análisis** | 4.69d | 2016-05-03 18:00 | 2016-05-10 15:30 |  | 25.56d |
| 11 | 2.2.1.1 | **Elicitación** | 3.12d | 2016-05-03 18:00 | 2016-05-06 19:00 |  | 25.56d |
| 12 |  | Generar lista de proveedores de requerimientos | 2h | 2016-05-03 18:00 | 2016-05-04 10:00 | 8 | 0.56d |
| 13 |  | Evaluar los proveedores de requerimientos | 1h | 2016-05-04 10:00 | 2016-05-04 11:00 | 12 | 0.56d |
| 14 |  | Definir estrategia de recolección de datos | 0.5h | 2016-05-04 11:00 | 2016-05-04 11:30 | 13 | 0.56d |
| 15 |  | Planificación de reuniones de licitación | 1.5h | 2016-05-04 11:30 | 2016-05-04 13:00 | 14 | 0.56d |
| 16 |  | Identificar procesos del sistema | 8h | 2016-05-04 15:00 | 2016-05-05 13:00 | 15 | 0.56d |
| 17 |  | Identificar requerimientos funcionales | 8h | 2016-05-05 15:00 | 2016-05-06 13:00 | 16 | 0.56d |
| 18 |  | Identificar requerimientos no funcionales | 4h | 2016-05-06 15:00 | 2016-05-06 19:00 | 17 | 0.56d |
| 19 | 2.2.1.2 | **Especificación** | 1d | 2016-05-09 09:00 | 2016-05-09 19:00 | 11 | 25.56d |
| 20 |  | Evaluación de requerimientos | 2h | 2016-05-09 09:00 | 2016-05-09 11:00 | 18 | 0.56d |
| 21 |  | SRS | 6h | 2016-05-09 11:00 | 2016-05-09 19:00 | 20 | 0.56d |
| 22 | 2.2.1.3 | **Gestión de requerimientos** | 0.56d | 2016-05-09 19:00 | 2016-05-10 15:30 | 19 | 25.56d |
| 23 |  | Priorizar los requerimientos | 2h | 2016-05-10 09:00 | 2016-05-10 11:00 | 21 | 0.56d |
| 24 |  | Almacenar en repositorio | 0.5h | 2016-05-10 11:00 | 2016-05-10 11:30 | 23 | 0.56d |
| 25 |  | Asignar a desarrolladores de software | 1h | 2016-05-10 11:30 | 2016-05-10 12:30 | 24 | 0.56d |
| 26 |  | Administración de cambios de requerimientos | 0.5h | 2016-05-10 12:30 | 2016-05-10 13:00 | 25 | 0.56d |
| 27 |  | Administración de la trazabilidad de requerimientos | 0.5h | 2016-05-10 15:00 | 2016-05-10 15:30 | 26 | 0.56d |
| 28 |  | Entrega de lista de proveedores de requerimientos, procesos del sistema y SRS | 0d | 2016-05-09 19:00 | 2016-05-09 19:00 |  | 1.12d |
| 29 | 2.2.2 | **Planificación** | 3.12d | 2016-05-10 15:30 | 2016-05-13 16:30 | 10 | 25.56d |
| 30 |  | Definición del ciclo de vida | 0.5h | 2016-05-10 15:30 | 2016-05-10 16:00 | 27 | 0.56d |
| 31 |  | Definición de políticas | 0.5h | 2016-05-10 16:00 | 2016-05-10 16:30 | 30 | 0.56d |
| 32 |  | Actualizar plan de proyecto | 2h | 2016-05-10 16:30 | 2016-05-10 18:30 | 31 | 0.56d |
| 33 |  | Actualizar matriz de comunicación | 1h | 2016-05-10 18:30 | 2016-05-11 09:30 | 32 | 0.56d |
| 34 | 2.2.2.5 | **Estimación** | 0.75d | 2016-05-11 09:30 | 2016-05-11 17:30 |  | 25.56d |
| 35 |  | Actualizar WBS/calendario | 1h | 2016-05-11 09:30 | 2016-05-11 10:30 | 33 | 0.56d |
| 36 |  | Diccionario del WBS | 4h | 2016-05-11 10:30 | 2016-05-11 16:30 | 35 | 0.56d |
| 37 |  | Costos | 1h | 2016-05-11 16:30 | 2016-05-11 17:30 | 36 | 0.56d |
| 38 | 2.2.2.6 | **Riesgos** | 1.5d | 2016-05-11 17:30 | 2016-05-13 11:30 | 34 | 25.56d |
| 39 |  | Identificación de riesgos | 6h | 2016-05-11 17:30 | 2016-05-12 15:30 | 37 | 0.56d |
| 40 |  | Asignación de prioridades | 2h | 2016-05-12 15:30 | 2016-05-12 17:30 | 39 | 0.56d |
| 41 |  | Plan de mitigación y contingencia | 4h | 2016-05-12 17:30 | 2016-05-13 11:30 | 40 | 0.56d |
| 42 | 2.2.2.7 | **Aseguramiento de la calidad** | 0.38d | 2016-05-13 11:30 | 2016-05-13 16:30 | 38 | 25.56d |
| 43 |  | Plan de gestión de la configuración | 2h | 2016-05-13 11:30 | 2016-05-13 15:30 | 41 | 0.56d |
| 44 |  | Junta de arranque de construcción | 1h | 2016-05-13 15:30 | 2016-05-13 16:30 | 43 | 0.56d |
| 45 |  | Entrega de ciclo de vida a utilizar, políticas,plan del proyecto, matriz de comunicación, diccionario del WBS, riesgos, prioridades de los riesgos, plan de mitigación y contingencia, plan de gestión de la configuración y junta de arranque de construcción. | 0d | 2016-05-13 11:30 | 2016-05-13 11:30 |  | 0.94d |
| 46 | 2.2.3 | **Diseño** | 2.62d | 2016-05-13 16:30 | 2016-05-18 11:30 | 29 | 25.56d |
| 47 |  | Definición de la arquitectura | 2h | 2016-05-13 16:30 | 2016-05-13 18:30 | 44 | 0.56d |
| 48 |  | Diagramas de caso de uso | 4h | 2016-05-13 18:30 | 2016-05-16 12:30 | 47 | 0.56d |
| 49 |  | Diagramas de secuencia | 2h | 2016-05-16 12:30 | 2016-05-16 16:30 | 48 | 0.56d |
| 50 |  | Diagramas de clases | 1h | 2016-05-16 16:30 | 2016-05-16 17:30 | 49 | 0.56d |
| 51 |  | Diagramas de componentes | 1h | 2016-05-16 17:30 | 2016-05-16 18:30 | 50 | 0.56d |
| 52 |  | Diagramas de despliegues | 2h | 2016-05-16 18:30 | 2016-05-17 10:30 | 51 | 0.56d |
| 53 |  | Mapa de navegación | 1h | 2016-05-17 10:30 | 2016-05-17 11:30 | 52 | 0.56d |
| 54 |  | Maquetación | 6h | 2016-05-17 11:30 | 2016-05-18 09:30 | 53 | 0.56d |
| 55 | 2.2.3.9 | **Diseño de diagramas de la base de datos** | 2.62d | 2016-05-13 16:30 | 2016-05-18 11:30 |  | 25.56d |
| 56 |  | Diagrama E-R | 1h | 2016-05-18 09:30 | 2016-05-18 10:30 | 54 | 0.56d |
| 57 |  | Diagrama relacional | 1h | 2016-05-18 10:30 | 2016-05-18 11:30 | 56 | 0.56d |
| 58 |  | Entrega de la arquitectura del sistema, casos de uso, secuencia, clases, componentes, despliegues, mapa de navegación y maquetación. | 0d | 2016-05-13 16:30 | 2016-05-13 16:30 |  | 3.19d |
| 59 | 2.2.4 | **Codificación** | 9.75d | 2016-05-18 11:30 | 2016-06-01 09:30 | 46 | 25.56d |
| 60 |  | Codificación de la base de datos | 3h | 2016-05-18 11:30 | 2016-05-18 16:30 | 57 | 0.56d |
| 61 | 2.2.4.2 | **Módulo clientes** | 1.56d | 2016-05-18 16:30 | 2016-05-20 11:00 |  | 25.56d |
| 62 |  | Interfaz | 1h | 2016-05-18 16:30 | 2016-05-18 17:30 | 60 | 0.56d |
| 63 |  | Clases de clientes | 6h | 2016-05-18 17:30 | 2016-05-19 15:30 | 62 | 0.56d |
| 64 |  | Conexión a BD | 0.5h | 2016-05-19 15:30 | 2016-05-19 16:00 | 63 | 0.56d |
| 65 |  | Alta de clientes | 0.5h | 2016-05-19 16:00 | 2016-05-19 16:30 | 64 | 0.56d |
| 66 |  | Baja de clientes | 0.5h | 2016-05-19 16:30 | 2016-05-19 17:00 | 65 | 0.56d |
| 67 |  | Actualización de clientes | 1h | 2016-05-19 17:00 | 2016-05-19 18:00 | 66 | 0.56d |
| 68 |  | Consultas de clientes | 1h | 2016-05-19 18:00 | 2016-05-19 19:00 | 67 | 0.56d |
| 69 |  | Reportes de clientes | 2h | 2016-05-20 09:00 | 2016-05-20 11:00 | 68 | 0.56d |
| 70 | 2.2.4.3 | **Módulo productos** | 2.19d | 2016-05-20 11:00 | 2016-05-24 12:30 | 61 | 25.56d |

| ID | WBS | Task | Duration | Start | Finish | Predecessors | Total float |
| --- | --- | --- | --- | --- | --- | --- | --- |
| 71 |  | Interfaz | 1.5h | 2016-05-20 11:00 | 2016-05-20 12:30 | 69 | 0.56d |
| 72 |  | Clases de productos | 8h | 2016-05-20 12:30 | 2016-05-23 12:30 | 71 | 0.56d |
| 73 |  | Conexión a BD | 0.5h | 2016-05-23 12:30 | 2016-05-23 13:00 | 72 | 0.56d |
| 74 |  | Alta de productos | 1h | 2016-05-23 15:00 | 2016-05-23 16:00 | 73 | 0.56d |
| 75 |  | Baja de productos | 1h | 2016-05-23 16:00 | 2016-05-23 17:00 | 74 | 0.56d |
| 76 |  | Actualización de productos | 1.5h | 2016-05-23 17:00 | 2016-05-23 18:30 | 75 | 0.56d |
| 77 |  | Consultas de productos | 1.5h | 2016-05-23 18:30 | 2016-05-24 10:00 | 76 | 0.56d |
| 78 |  | Reportes de productos | 2.5h | 2016-05-24 10:00 | 2016-05-24 12:30 | 77 | 0.56d |
| 79 | 2.2.4.4 | **Módulo ventas** | 1.56d | 2016-05-24 12:30 | 2016-05-25 19:00 | 70 | 25.56d |
| 80 |  | Interfaz | 1h | 2016-05-24 12:30 | 2016-05-24 15:30 | 78 | 0.56d |
| 81 |  | Clases de ventas | 6h | 2016-05-24 15:30 | 2016-05-25 11:30 | 80 | 0.56d |
| 82 |  | Conexión a BD | 0.5h | 2016-05-25 11:30 | 2016-05-25 12:00 | 81 | 0.56d |
| 83 |  | Alta de ventas | 0.5h | 2016-05-25 12:00 | 2016-05-25 12:30 | 82 | 0.56d |
| 84 |  | Baja de ventas | 0.5h | 2016-05-25 12:30 | 2016-05-25 13:00 | 83 | 0.56d |
| 85 |  | Actualización de ventas | 1h | 2016-05-25 15:00 | 2016-05-25 16:00 | 84 | 0.56d |
| 86 |  | Consultas de ventas | 1h | 2016-05-25 16:00 | 2016-05-25 17:00 | 85 | 0.56d |
| 87 |  | Reportes de ventas | 2h | 2016-05-25 17:00 | 2016-05-25 19:00 | 86 | 0.56d |
| 88 | 2.2.4.5 | **Módulo categoría** | 1.44d | 2016-05-26 09:00 | 2016-05-27 12:30 | 79 | 25.56d |
| 89 |  | Interfaz | 1h | 2016-05-26 09:00 | 2016-05-26 10:00 | 87 | 0.56d |
| 90 |  | Clases de categoría | 5h | 2016-05-26 10:00 | 2016-05-26 17:00 | 89 | 0.56d |
| 91 |  | Conexión a BD | 0.5h | 2016-05-26 17:00 | 2016-05-26 17:30 | 90 | 0.56d |
| 92 |  | Alta de categoría | 0.5h | 2016-05-26 17:30 | 2016-05-26 18:00 | 91 | 0.56d |
| 93 |  | Baja de categoría | 0.5h | 2016-05-26 18:00 | 2016-05-26 18:30 | 92 | 0.56d |
| 94 |  | Actualización de categoría | 1h | 2016-05-26 18:30 | 2016-05-27 09:30 | 93 | 0.56d |
| 95 |  | Consultas de categoría | 1h | 2016-05-27 09:30 | 2016-05-27 10:30 | 94 | 0.56d |
| 96 |  | Reportes de categoría | 2h | 2016-05-27 10:30 | 2016-05-27 12:30 | 95 | 0.56d |
| 97 | 2.2.4.6 | **Módulo de provedores** | 2.19d | 2016-05-27 12:30 | 2016-05-31 16:00 | 88 | 25.56d |
| 98 |  | Interfaz | 1.5h | 2016-05-27 12:30 | 2016-05-27 16:00 | 96 | 0.56d |
| 99 |  | Clases de proveedores | 8h | 2016-05-27 16:00 | 2016-05-30 16:00 | 98 | 0.56d |
| 100 |  | Conexión a BD | 0.5h | 2016-05-30 16:00 | 2016-05-30 16:30 | 99 | 0.56d |
| 101 |  | Alta de proveedores | 1h | 2016-05-30 16:30 | 2016-05-30 17:30 | 100 | 0.56d |
| 102 |  | Baja de proveedores | 1h | 2016-05-30 17:30 | 2016-05-30 18:30 | 101 | 0.56d |
| 103 |  | Actualización de proveedores | 1.5h | 2016-05-30 18:30 | 2016-05-31 10:00 | 102 | 0.56d |
| 104 |  | Consultas de proveedores | 1.5h | 2016-05-31 10:00 | 2016-05-31 11:30 | 103 | 0.56d |
| 105 |  | Reportes de proveedores | 2.5h | 2016-05-31 11:30 | 2016-05-31 16:00 | 104 | 0.56d |
| 106 | 2.2.4.7 | **Login** | 0.44d | 2016-05-31 16:00 | 2016-06-01 09:30 | 97 | 25.56d |
| 107 |  | Interfaz | 0.5h | 2016-05-31 16:00 | 2016-05-31 16:30 | 105 | 0.56d |
| 108 |  | Validación | 3h | 2016-05-31 16:30 | 2016-06-01 09:30 | 107 | 0.56d |
| 109 |  | Entrega de base de datos, reporte de módulo clientes, productos, ventas, categoría, proveedores y login. | 0d | 2016-05-18 11:30 | 2016-05-18 11:30 |  | 10.31d |
| 110 | 2.2.5 | **Pruebas** | 6.12d | 2016-06-01 09:30 | 2016-06-09 10:30 | 59 | 25.56d |
| 111 | 2.2.5.1 | **Pruebas de caja blanca** | 6.12d | 2016-06-01 09:30 | 2016-06-09 10:30 |  | 25.56d |
| 112 | 2.2.5.1.1 | **Módulo de clientes** | 1d | 2016-06-01 09:30 | 2016-06-02 09:30 |  | 25.56d |
| 113 |  | Puebas unitarias | 4h | 2016-06-01 09:30 | 2016-06-01 15:30 | 108 | 0.56d |
| 114 |  | Pruebas de módulo | 4h | 2016-06-01 15:30 | 2016-06-02 09:30 | 113 | 0.56d |
| 115 | 2.2.5.1.2 | **Módulo de productos** | 0.88d | 2016-06-02 09:30 | 2016-06-02 18:30 | 112 | 25.56d |
| 116 |  | Pruebas de desempeño | 4h | 2016-06-02 09:30 | 2016-06-02 15:30 | 114 | 0.56d |
| 117 |  | Pruebas de regresion | 3h | 2016-06-02 15:30 | 2016-06-02 18:30 | 116 | 0.56d |
| 118 | 2.2.5.1.3 | **Módulo ventas** | 0.5d | 2016-06-02 18:30 | 2016-06-03 12:30 | 115 | 25.56d |
| 119 |  | Pruebas de módulo | 4h | 2016-06-02 18:30 | 2016-06-03 12:30 | 117 | 0.56d |
| 120 | 2.2.5.1.4 | **Módulo categoría** | 0.5d | 2016-06-03 12:30 | 2016-06-03 18:30 | 118 | 25.56d |
| 121 |  | Pruebas de desempeño | 4h | 2016-06-03 12:30 | 2016-06-03 18:30 | 119 | 0.56d |
| 122 | 2.2.5.1.5 | **Módulo proveedores** | 1d | 2016-06-03 18:30 | 2016-06-06 18:30 | 120 | 25.56d |
| 123 |  | Pruebas unitarias | 4h | 2016-06-03 18:30 | 2016-06-06 12:30 | 121 | 0.56d |
| 124 |  | Pruebas de desempeño | 4h | 2016-06-06 12:30 | 2016-06-06 18:30 | 123 | 0.56d |
| 125 | 2.2.5.1.6 | **Login** | 1.25d | 2016-06-06 18:30 | 2016-06-08 10:30 | 122 | 25.56d |
| 126 |  | Pruebas de stress | 4h | 2016-06-06 18:30 | 2016-06-07 12:30 | 124 | 0.56d |
| 127 |  | Pruebas de carga | 6h | 2016-06-07 12:30 | 2016-06-08 10:30 | 126 | 0.56d |
| 128 |  | Pruebas del sistema | 8h | 2016-06-08 10:30 | 2016-06-09 10:30 | 127 | 0.56d |
| 129 |  | Entrega de resultados de pruebas de módulo de clientes, productos, ventas, categoría, proveedores y login. | 0d | 2016-06-01 09:30 | 2016-06-01 09:30 |  | 6.69d |
| 130 | 2.3 | **Iteración 2** | 16.62d | 2016-06-09 10:30 | 2016-07-01 17:30 | 9 | 25.56d |
| 131 | 2.3.1 | **Análisis** | 3.06d | 2016-06-09 10:30 | 2016-06-14 11:00 |  | 25.56d |
| 132 | 2.3.1.1 | **Elicitación** | 3.06d | 2016-06-09 10:30 | 2016-06-14 11:00 |  | 25.56d |
| 133 |  | Identificar procesos del sistema | 6h | 2016-06-09 10:30 | 2016-06-09 18:30 | 128 | 25.56d |
| 134 |  | Identificar requerimientos funcionales | 6h | 2016-06-09 18:30 | 2016-06-10 16:30 | 133 | 25.56d |
| 135 |  | Identificar requerimientos no funcionales | 4h | 2016-06-10 16:30 | 2016-06-13 10:30 | 134 | 25.56d |
| 136 | 2.3.1.1.4 | **Especificación** | 0.75d | 2016-06-13 10:30 | 2016-06-13 18:30 |  | 25.56d |
| 137 |  | Evaluación de requerimientos | 1h | 2016-06-13 10:30 | 2016-06-13 11:30 | 135 | 25.56d |
| 138 |  | SRS | 5h | 2016-06-13 11:30 | 2016-06-13 18:30 | 137 | 25.56d |
| 139 | 2.3.1.1.5 | **Gestión de requerimientos** | 0.31d | 2016-06-13 18:30 | 2016-06-14 11:00 | 136 | 25.56d |
| 140 |  | Priorizar los requerimientos | 1h | 2016-06-13 18:30 | 2016-06-14 09:30 | 138 | 25.56d |

| ID | WBS | Task | Duration | Start | Finish | Predecessors | Total float |
| --- | --- | --- | --- | --- | --- | --- | --- |
| 141 |  | Almacenar en repositorio | 0.5h | 2016-06-14 09:30 | 2016-06-14 10:00 | 140 | 25.56d |
| 142 |  | Asignar a desarrolladores de software | 1h | 2016-06-14 10:00 | 2016-06-14 11:00 | 141 | 25.56d |
| 143 |  | Entrega de procesos del sistema y SRS | 0d | 2016-06-14 11:00 | 2016-06-14 11:00 | 142 | 25.56d |
| 144 | 2.3.2 | **Planificación** | 1.5d | 2016-06-14 11:00 | 2016-06-15 17:00 | 131 | 25.56d |
| 145 |  | Actualizar plan de proyecto | 1h | 2016-06-14 11:00 | 2016-06-14 12:00 | 143 | 25.56d |
| 146 | 2.3.2.2 | **Estimación** | 0.38d | 2016-06-14 12:00 | 2016-06-14 17:00 |  | 25.56d |
| 147 |  | Actualizar diccionario del WBS | 2h | 2016-06-14 12:00 | 2016-06-14 16:00 | 145 | 25.56d |
| 148 |  | Actualizar costos | 1h | 2016-06-14 16:00 | 2016-06-14 17:00 | 147 | 25.56d |
| 149 | 2.3.2.3 | **Riesgos** | 0.88d | 2016-06-14 17:00 | 2016-06-15 16:00 | 146 | 25.56d |
| 150 |  | Identificación de nuevos riesgos | 4h | 2016-06-14 17:00 | 2016-06-15 11:00 | 148 | 25.56d |
| 151 |  | Asignación de prioridades | 1h | 2016-06-15 11:00 | 2016-06-15 12:00 | 150 | 25.56d |
| 152 |  | Plan de mitigación y contingencia | 2h | 2016-06-15 12:00 | 2016-06-15 16:00 | 151 | 25.56d |
| 153 | 2.3.2.4 | **Aseguramiento de la calidad** | 0.12d | 2016-06-15 16:00 | 2016-06-15 17:00 | 149 | 25.56d |
| 154 |  | Junta de arranque de construcción | 1h | 2016-06-15 16:00 | 2016-06-15 17:00 | 152 | 25.56d |
| 155 |  | Entrega del nuevo plan del proyecto, actualización del WBS, nuevos riesgos, prioridades de los riesgos, nuevo plan de mitigación y contingencia y junta de arranque de construcción | 0d | 2016-06-15 16:00 | 2016-06-15 16:00 |  | 25.69d |
| 156 | 2.3.3 | **Diseño** | 1.38d | 2016-06-15 17:00 | 2016-06-17 10:00 | 144 | 25.56d |
| 157 |  | Diagramas de caso de uso | 3h | 2016-06-15 17:00 | 2016-06-16 10:00 | 154 | 25.56d |
| 158 |  | Diagramas de secuencia | 1h | 2016-06-16 10:00 | 2016-06-16 11:00 | 157 | 25.56d |
| 159 |  | Actualizar diagramas de componentes | 1h | 2016-06-16 11:00 | 2016-06-16 12:00 | 158 | 25.56d |
| 160 |  | Diagramas de despliegues | 1h | 2016-06-16 12:00 | 2016-06-16 13:00 | 159 | 25.56d |
| 161 |  | Mapa de navegación | 1h | 2016-06-16 15:00 | 2016-06-16 16:00 | 160 | 25.56d |
| 162 |  | Maquetación | 4h | 2016-06-16 16:00 | 2016-06-17 10:00 | 161 | 25.56d |
| 163 |  | Entrega de nuevos casos de uso, de secuencia, componentes, despliegues del mapa de navegación y de la maquetación | 0d | 2016-06-15 17:00 | 2016-06-15 17:00 |  | 26.94d |
| 164 | 2.3.4 | **Codificación** | 5.94d | 2016-06-17 10:00 | 2016-06-27 09:30 | 156 | 25.56d |
| 165 | 2.3.4.1 | **Módulo dirección** | 1.19d | 2016-06-17 10:00 | 2016-06-20 11:30 |  | 25.56d |
| 166 |  | Interfaz | 1h | 2016-06-17 10:00 | 2016-06-17 11:00 | 162 | 0.56d |
| 167 |  | Clases de dirección | 1h | 2016-06-17 11:00 | 2016-06-17 12:00 | 166 | 0.56d |
| 168 |  | Conexión a BD | 0.5h | 2016-06-17 12:00 | 2016-06-17 12:30 | 167 | 0.56d |
| 169 |  | Alta de dirección | 1.5h | 2016-06-17 12:30 | 2016-06-17 16:00 | 168 | 0.56d |
| 170 |  | Baja de dirección | 1.5h | 2016-06-17 16:00 | 2016-06-17 17:30 | 169 | 0.56d |
| 171 |  | Actualización de dirección | 2h | 2016-06-17 17:30 | 2016-06-20 09:30 | 170 | 0.56d |
| 172 |  | Consultas de dirección | 1h | 2016-06-20 09:30 | 2016-06-20 10:30 | 171 | 0.56d |
| 173 |  | Reportes de dirección | 1h | 2016-06-20 10:30 | 2016-06-20 11:30 | 172 | 0.56d |
| 174 | 2.3.4.2 | **Módulo deudascobrar** | 1.19d | 2016-06-20 11:30 | 2016-06-21 13:00 | 165 | 25.56d |
| 175 |  | Interfaz | 1h | 2016-06-20 11:30 | 2016-06-20 12:30 | 173 | 0.56d |
| 176 |  | Clases de deudascobrar | 1h | 2016-06-20 12:30 | 2016-06-20 15:30 | 175 | 0.56d |
| 177 |  | Conexión a BD | 0.5h | 2016-06-20 15:30 | 2016-06-20 16:00 | 176 | 0.56d |
| 178 |  | Alta de deudascobrar | 1.5h | 2016-06-20 16:00 | 2016-06-20 17:30 | 177 | 0.56d |
| 179 |  | Baja de deudascobrar | 1.5h | 2016-06-20 17:30 | 2016-06-20 19:00 | 178 | 0.56d |
| 180 |  | Actualización de deudascobrar | 2h | 2016-06-21 09:00 | 2016-06-21 11:00 | 179 | 0.56d |
| 181 |  | Consultas de deudascobrar | 1h | 2016-06-21 11:00 | 2016-06-21 12:00 | 180 | 0.56d |
| 182 |  | Reportes de deudascobrar | 1h | 2016-06-21 12:00 | 2016-06-21 13:00 | 181 | 0.56d |
| 183 | 2.3.4.3 | **Módulo deudaspagar** | 1.19d | 2016-06-21 15:00 | 2016-06-22 16:30 | 174 | 25.56d |
| 184 |  | Interfaz | 1h | 2016-06-21 15:00 | 2016-06-21 16:00 | 182 | 0.56d |
| 185 |  | Clases de deudaspagar | 1h | 2016-06-21 16:00 | 2016-06-21 17:00 | 184 | 0.56d |
| 186 |  | Conexión a BD | 0.5h | 2016-06-21 17:00 | 2016-06-21 17:30 | 185 | 0.56d |
| 187 |  | Alta de deudaspagar | 1.5h | 2016-06-21 17:30 | 2016-06-21 19:00 | 186 | 0.56d |
| 188 |  | Baja de deudaspagar | 1.5h | 2016-06-22 09:00 | 2016-06-22 10:30 | 187 | 0.56d |
| 189 |  | Actualización de deudaspagar | 2h | 2016-06-22 10:30 | 2016-06-22 12:30 | 188 | 0.56d |
| 190 |  | Consultas de deudaspagar | 1h | 2016-06-22 12:30 | 2016-06-22 15:30 | 189 | 0.56d |
| 191 |  | Reportes de deudaspagar | 1h | 2016-06-22 15:30 | 2016-06-22 16:30 | 190 | 0.56d |
| 192 | 2.3.4.4 | **Módulo abonoclientes** | 1.19d | 2016-06-22 16:30 | 2016-06-23 18:00 | 183 | 25.56d |
| 193 |  | Interfaz | 1h | 2016-06-22 16:30 | 2016-06-22 17:30 | 191 | 0.56d |
| 194 |  | Clases de abonoclientes | 1h | 2016-06-22 17:30 | 2016-06-22 18:30 | 193 | 0.56d |
| 195 |  | Conexión a BD | 0.5h | 2016-06-22 18:30 | 2016-06-22 19:00 | 194 | 0.56d |
| 196 |  | Alta de abonoclientes | 1.5h | 2016-06-23 09:00 | 2016-06-23 10:30 | 195 | 0.56d |
| 197 |  | Baja de abonoclientes | 1.5h | 2016-06-23 10:30 | 2016-06-23 12:00 | 196 | 0.56d |
| 198 |  | Actualización de abonoclientes | 2h | 2016-06-23 12:00 | 2016-06-23 16:00 | 197 | 0.56d |
| 199 |  | Consultas de abonoclientes | 1h | 2016-06-23 16:00 | 2016-06-23 17:00 | 198 | 0.56d |
| 200 |  | Reportes de abonoclientes | 1h | 2016-06-23 17:00 | 2016-06-23 18:00 | 199 | 0.56d |
| 201 | 2.3.4.5 | **Módulo abonoproveedores** | 1.19d | 2016-06-23 18:00 | 2016-06-27 09:30 | 192 | 25.56d |
| 202 |  | Interfaz | 1h | 2016-06-23 18:00 | 2016-06-23 19:00 | 200 | 0.56d |
| 203 |  | Clases de abonoproveedores | 1h | 2016-06-24 09:00 | 2016-06-24 10:00 | 202 | 0.56d |
| 204 |  | Conexión a BD | 0.5h | 2016-06-24 10:00 | 2016-06-24 10:30 | 203 | 0.56d |
| 205 |  | Alta de abonoproveedores | 1.5h | 2016-06-24 10:30 | 2016-06-24 12:00 | 204 | 0.56d |
| 206 |  | Baja de abonoproveedores | 1.5h | 2016-06-24 12:00 | 2016-06-24 15:30 | 205 | 0.56d |
| 207 |  | Actualización de abonoproveedores | 2h | 2016-06-24 15:30 | 2016-06-24 17:30 | 206 | 0.56d |
| 208 |  | Consultas de abonoproveedores | 1h | 2016-06-24 17:30 | 2016-06-24 18:30 | 207 | 0.56d |
| 209 |  | Reportes de abonoproveedores | 1h | 2016-06-24 18:30 | 2016-06-27 09:30 | 208 | 0.56d |
| 210 |  | Entrega de reporte de módulo dirección, deudaspagar, deudascobrar, abonoclientes y abonoproveedores. | 0d | 2016-06-23 18:00 | 2016-06-23 18:00 |  | 1.75d |

| ID | WBS | Task | Duration | Start | Finish | Predecessors | Total float | Constraint |
| --- | --- | --- | --- | --- | --- | --- | --- | --- |
| 211 | 2.3.5 | **Pruebas** | 4.75d | 2016-06-27 09:30 | 2016-07-01 17:30 | 164 | 25.56d |  |
| 212 | 2.3.5.1 | **Pruebas de caja blanca** | 4.75d | 2016-06-27 09:30 | 2016-07-01 17:30 |  | 25.56d |  |
| 213 | 2.3.5.1.1 | **Modulo de usuarios** | 1d | 2016-06-27 09:30 | 2016-06-28 09:30 |  | 25.56d |  |
| 214 |  | Puebas unitarias | 4h | 2016-06-27 09:30 | 2016-06-27 15:30 | 209 | 0.56d |  |
| 215 |  | Pruebas de modulo | 4h | 2016-06-27 15:30 | 2016-06-28 09:30 | 214 | 0.56d |  |
| 216 | 2.3.5.1.2 | **Modulo de productos** | 0.88d | 2016-06-28 09:30 | 2016-06-28 18:30 | 213 | 25.56d |  |
| 217 |  | Pruebas de desempeño | 4h | 2016-06-28 09:30 | 2016-06-28 15:30 | 215 | 0.56d |  |
| 218 |  | Pruebas de regresion | 3h | 2016-06-28 15:30 | 2016-06-28 18:30 | 217 | 0.56d |  |
| 219 | 2.3.5.1.3 | **Módulo deudaspagar** | 0.5d | 2016-06-28 18:30 | 2016-06-29 12:30 | 216 | 25.56d |  |
| 220 |  | Pruebas de módulo | 4h | 2016-06-28 18:30 | 2016-06-29 12:30 | 218 | 0.56d |  |
| 221 | 2.3.5.1.4 | **Módulo abonoclientes** | 0.5d | 2016-06-29 12:30 | 2016-06-29 18:30 | 219 | 25.56d |  |
| 222 |  | Pruebas de desempeño | 4h | 2016-06-29 12:30 | 2016-06-29 18:30 | 220 | 0.56d |  |
| 223 | 2.3.5.1.5 | **Módulo abonoproveedores** | 0.88d | 2016-06-29 18:30 | 2016-06-30 17:30 | 221 | 25.56d |  |
| 224 |  | Pruebas de stress | 4h | 2016-06-29 18:30 | 2016-06-30 12:30 | 222 | 0.56d |  |
| 225 |  | Pruebas de carga | 3h | 2016-06-30 12:30 | 2016-06-30 17:30 | 224 | 0.56d |  |
| 226 |  | Pruebas del sistema | 8h | 2016-06-30 17:30 | 2016-07-01 17:30 | 223 | 0.56d |  |
| 227 |  | Entrega de resultados de pruebas de módulo de dirección, deudaspagar, deudascobrar, abonoclientes y abonoproveedores. | 0d | 2016-06-27 09:30 | 2016-06-27 09:30 |  | 5.31d |  |
| 228 | 2.4 | **Implementación** | 2.62d | 2016-07-01 17:30 | 2016-07-06 12:30 | 130 | 25.56d |  |
| 229 |  | Evaluación del hosting | 2h | 2016-07-01 17:30 | 2016-07-04 09:30 | 226 | 0.56d |  |
| 230 |  | Implementar el sitio en el hosting | 8h | 2016-07-04 09:30 | 2016-07-05 09:30 | 229 | 0.56d |  |
| 231 |  | Manual de usuario | 5h | 2016-07-05 09:30 | 2016-07-05 16:30 | 230 | 0.56d |  |
| 232 |  | Capacitación | 2h | 2016-07-05 16:30 | 2016-07-05 18:30 | 231 | 0.56d |  |
| 233 | 2.4.5 | **Pruebas de caja blanca** | 2.62d | 2016-07-01 17:30 | 2016-07-06 12:30 |  | 25.56d |  |
| 234 |  | Pruebas de rendimiento | 2h | 2016-07-05 18:30 | 2016-07-06 10:30 | 232 | 0.56d |  |
| 235 |  | Pruebas de sistema | 2h | 2016-07-06 10:30 | 2016-07-06 12:30 | 234 | 0.56d |  |
| 236 |  | Entrega del manual de usuario | 0d | 2016-07-01 17:30 | 2016-07-01 17:30 |  | 3.19d |  |
| 237 | 2.5 | **Cierre del proyecto** | 1d | 2016-07-06 12:30 | 2016-07-07 12:30 | 228 | 25.56d |  |
| 238 |  | Carta de aceptación | 1h | 2016-07-06 12:30 | 2016-07-06 15:30 | 235 | 0.56d |  |
| 239 |  | Acta de cierre del proyecto | 1h | 2016-07-06 15:30 | 2016-07-06 16:30 | 238 | 0.56d |  |
| 240 |  | Evaluación de desempeño | 2h | 2016-07-06 16:30 | 2016-07-06 18:30 | 239 | 0.56d |  |
| 241 |  | Junta de lecciones aprendidas | 1h | 2016-07-06 18:30 | 2016-07-07 09:30 | 240 | 0.56d |  |
| 242 |  | Revisión de adherencias de procesos | 1h | 2016-07-07 09:30 | 2016-07-07 10:30 | 241 | 0.56d |  |
| 243 |  | Liberación de los recursos | 1h | 2016-07-07 10:30 | 2016-07-07 11:30 | 242 | 0.56d |  |
| 244 |  | Informe final | 1h | 2016-07-07 11:30 | 2016-07-07 12:30 | 243 | 0.56d |  |
| 245 |  | Entrega de carta de aceptación, acta de cierre del proyecto, evaluación de desempeño, junta de lecciones aprendidas, adherencia de procesos e informe final. | 0d | 2016-07-06 12:30 | 2016-07-06 12:30 |  | 1.56d |  |
| 249 | 2.6 | **Revisión** | 70d | 2016-05-06 09:00 | 2016-08-12 09:00 |  | 0d |  |
| 250 |  | Revisión 1 | 0d | 2016-05-06 09:00 | 2016-05-06 09:00 |  |  | start no earlier than 2016-05-06 09:00 |
| 251 |  | Revisión 2 | 0d | 2016-05-13 09:00 | 2016-05-13 09:00 |  |  | start no earlier than 2016-05-13 09:00 |
| 252 |  | Revisión 3 | 0d | 2016-05-20 09:00 | 2016-05-20 09:00 |  |  | start no earlier than 2016-05-20 09:00 |
| 253 |  | Revisión 4 | 0d | 2016-05-27 09:00 | 2016-05-27 09:00 |  |  | start no earlier than 2016-05-27 09:00 |
| 254 |  | Revisión 5 | 0d | 2016-06-03 09:00 | 2016-06-03 09:00 |  |  | start no earlier than 2016-06-03 09:00 |
| 255 |  | Revisión 6 | 0d | 2016-06-10 09:00 | 2016-06-10 09:00 |  |  | start no earlier than 2016-06-10 09:00 |
| 256 |  | Revisión 7 | 0d | 2016-06-17 09:00 | 2016-06-17 09:00 |  |  | start no earlier than 2016-06-17 09:00 |
| 257 |  | Revisión 8 | 0d | 2016-06-24 09:00 | 2016-06-24 09:00 |  |  | start no earlier than 2016-06-24 09:00 |
| 258 |  | Revisión 9 | 0d | 2016-07-01 09:00 | 2016-07-01 09:00 |  |  | start no earlier than 2016-07-01 09:00 |
| 259 |  | Revisión 10 | 0d | 2016-07-08 09:00 | 2016-07-08 09:00 |  |  | start no earlier than 2016-07-08 09:00 |
| 260 |  | Revisión 11 | 0d | 2016-07-15 09:00 | 2016-07-15 09:00 |  |  | start no earlier than 2016-07-15 09:00 |
| 261 |  | Revisión 12 | 0d | 2016-07-22 09:00 | 2016-07-22 09:00 |  |  | start no earlier than 2016-07-22 09:00 |
| 262 |  | Revisión 13 | 0d | 2016-07-29 09:00 | 2016-07-29 09:00 |  |  | start no earlier than 2016-07-29 09:00 |
| 263 |  | Revisión 14 | 0d | 2016-08-05 09:00 | 2016-08-05 09:00 |  |  | start no earlier than 2016-08-05 09:00 |
| 264 |  | Revisión 15 | 0d | 2016-08-12 09:00 | 2016-08-12 09:00 |  |  | start no earlier than 2016-08-12 09:00 |

## Version 2 (saved 2016-07-03)

Note of the change: planeacion project

Last finish 2016-08-12 → 2016-07-06 (-37d). Complete tasks 0 → 176.

Removed: 249 Revisión; 250 Revisión 1; 251 Revisión 2; 252 Revisión 3; 253 Revisión 4; 254 Revisión 5; 255 Revisión 6; 256 Revisión 7; 257 Revisión 8; 258 Revisión 9; 259 Revisión 10; 260 Revisión 11; 261 Revisión 12; 262 Revisión 13; 263 Revisión 14; 264 Revisión 15

Changed:

| ID | Task | Start | Finish | Duration | Complete | Total float | Predecessors |
| --- | --- | --- | --- | --- | --- | --- | --- |
| 1 | **Plan preliminar** | 2016-05-02 09:00 A | 2016-05-03 17:00 A |  | 0% → 100% |  |  |
| 2 | Generar WBS del producto inicial | 2016-05-02 09:00 A | 2016-05-02 13:00 A |  | 0% → 100% | 0d → none |  |
| 3 | Generar project charter | 2016-05-02 15:00 A | 2016-05-02 16:00 A |  | 0% → 100% | 0d → none |  |
| 4 | Plan preliminar del proyecto | 2016-05-02 16:00 A | 2016-05-03 16:00 A |  | 0% → 100% | 0d → none |  |
| 5 | Matriz de comunicación | 2016-05-03 16:00 A | 2016-05-03 17:00 A |  | 0% → 100% | 0d → none | 4 → 4FS-1h |
| 6 | Entrega de WBS del producto inicial, project charter, plan preliminar y matriz de comunicación | 2016-05-02 09:00 A | 2016-05-02 09:00 A |  | 0% → 100% | 1.75d → none |  |
| 7 | **Nombre del proyecto** | 2016-05-03 17:00 A | 2016-08-12 09:00 → 2016-07-06 13:00 (-37d) | 72.25d → 45.75d | 0% → 94% |  |  |
| 9 | **Iteración 1** | 2016-05-03 18:00 A | 2016-06-09 10:30 A |  | 0% → 100% | 25.56d → none |  |
| 10 | **Análisis** | 2016-05-03 18:00 A | 2016-05-10 15:30 A |  | 0% → 100% | 25.56d → none |  |
| 11 | **Elicitación** | 2016-05-03 18:00 A | 2016-05-06 19:00 A |  | 0% → 100% | 25.56d → none |  |
| 12 | Generar lista de proveedores de requerimientos | 2016-05-03 18:00 A | 2016-05-04 10:00 A |  | 0% → 100% | 0.56d → none |  |
| 13 | Evaluar los proveedores de requerimientos | 2016-05-04 10:00 A | 2016-05-04 11:00 A |  | 0% → 100% | 0.56d → none |  |
| 14 | Definir estrategia de recolección de datos | 2016-05-04 11:00 A | 2016-05-04 11:30 A |  | 0% → 100% | 0.56d → none |  |
| 15 | Planificación de reuniones de licitación | 2016-05-04 11:30 A | 2016-05-04 13:00 A |  | 0% → 100% | 0.56d → none |  |
| 16 | Identificar procesos del sistema | 2016-05-04 15:00 A | 2016-05-05 13:00 A |  | 0% → 100% | 0.56d → none |  |
| 17 | Identificar requerimientos funcionales | 2016-05-05 15:00 A | 2016-05-06 13:00 A |  | 0% → 100% | 0.56d → none |  |
| 18 | Identificar requerimientos no funcionales | 2016-05-06 15:00 A | 2016-05-06 19:00 A |  | 0% → 100% | 0.56d → none |  |
| 19 | **Especificación** | 2016-05-09 09:00 A | 2016-05-09 19:00 A |  | 0% → 100% | 25.56d → none |  |
| 20 | Evaluación de requerimientos | 2016-05-09 09:00 A | 2016-05-09 11:00 A |  | 0% → 100% | 0.56d → none | 18 → 18FS-4h |
| 21 | SRS | 2016-05-09 11:00 A | 2016-05-09 19:00 A |  | 0% → 100% | 0.56d → none |  |
| 22 | **Gestión de requerimientos** | 2016-05-09 19:00 A | 2016-05-10 15:30 A |  | 0% → 100% | 25.56d → none |  |
| 23 | Priorizar los requerimientos | 2016-05-10 09:00 A | 2016-05-10 11:00 A |  | 0% → 100% | 0.56d → none | 21 → 21FS-2h |
| 24 | Almacenar en repositorio | 2016-05-10 11:00 A | 2016-05-10 11:30 A |  | 0% → 100% | 0.56d → none |  |
| 25 | Asignar a desarrolladores de software | 2016-05-10 11:30 A | 2016-05-10 12:30 A |  | 0% → 100% | 0.56d → none |  |
| 26 | Administración de cambios de requerimientos | 2016-05-10 12:30 A | 2016-05-10 13:00 A |  | 0% → 100% | 0.56d → none |  |
| 27 | Administración de la trazabilidad de requerimientos | 2016-05-10 15:00 A | 2016-05-10 15:30 A |  | 0% → 100% | 0.56d → none |  |
| 28 | Entrega de lista de proveedores de requerimientos, procesos del sistema y SRS | 2016-05-09 19:00 A | 2016-05-09 19:00 A |  | 0% → 100% | 1.12d → none |  |
| 29 | **Planificación** | 2016-05-10 15:30 A | 2016-05-13 16:30 A |  | 0% → 100% | 25.56d → none |  |
| 30 | Definición del ciclo de vida | 2016-05-10 15:30 A | 2016-05-10 16:00 A |  | 0% → 100% | 0.56d → none |  |
| 31 | Definición de políticas | 2016-05-10 16:00 A | 2016-05-10 16:30 A |  | 0% → 100% | 0.56d → none |  |
| 32 | Actualizar plan de proyecto | 2016-05-10 16:30 A | 2016-05-10 18:30 A |  | 0% → 100% | 0.56d → none |  |
| 33 | Actualizar matriz de comunicación | 2016-05-10 18:30 A | 2016-05-11 09:30 A |  | 0% → 100% | 0.56d → none |  |
| 34 | **Estimación** | 2016-05-11 09:30 A | 2016-05-11 17:30 A |  | 0% → 100% | 25.56d → none |  |
| 35 | Actualizar WBS/calendario | 2016-05-11 09:30 A | 2016-05-11 10:30 A |  | 0% → 100% | 0.56d → none |  |
| 36 | Diccionario del WBS | 2016-05-11 10:30 A | 2016-05-11 16:30 A |  | 0% → 100% | 0.56d → none |  |
| 37 | Costos | 2016-05-11 16:30 A | 2016-05-11 17:30 A |  | 0% → 100% | 0.56d → none |  |
| 38 | **Riesgos** | 2016-05-11 17:30 A | 2016-05-13 11:30 A |  | 0% → 100% | 25.56d → none |  |
| 39 | Identificación de riesgos | 2016-05-11 17:30 A | 2016-05-12 15:30 A |  | 0% → 100% | 0.56d → none |  |
| 40 | Asignación de prioridades | 2016-05-12 15:30 A | 2016-05-12 17:30 A |  | 0% → 100% | 0.56d → none |  |
| 41 | Plan de mitigación y contingencia | 2016-05-12 17:30 A | 2016-05-13 11:30 A |  | 0% → 100% | 0.56d → none |  |
| 42 | **Aseguramiento de la calidad** | 2016-05-13 11:30 A | 2016-05-13 16:30 A |  | 0% → 100% | 25.56d → none |  |
| 43 | Plan de gestión de la configuración | 2016-05-13 11:30 A | 2016-05-13 15:30 A |  | 0% → 100% | 0.56d → none |  |
| 44 | Junta de arranque de construcción | 2016-05-13 15:30 A | 2016-05-13 16:30 A |  | 0% → 100% | 0.56d → none |  |
| 45 | Entrega de ciclo de vida a utilizar, políticas,plan del proyecto, matriz de comunicación, diccionario del WBS, riesgos, prioridades de los riesgos, plan de mitigación y contingencia, plan de gestión de la configuración y junta de arranque de construcción. | 2016-05-13 11:30 A | 2016-05-13 11:30 A |  | 0% → 100% | 0.94d → none |  |
| 46 | **Diseño** | 2016-05-13 16:30 → 2016-05-13 15:30 A | 2016-05-18 11:30 A | 2.62d → 2.75d | 0% → 100% | 25.56d → none | 29 → 29FS-1h |
| 47 | Definición de la arquitectura | 2016-05-13 16:30 A | 2016-05-13 18:30 A |  | 0% → 100% | 0.56d → none |  |
| 48 | Diagramas de caso de uso | 2016-05-13 18:30 A | 2016-05-16 12:30 A |  | 0% → 100% | 0.56d → none |  |
| 49 | Diagramas de secuencia | 2016-05-16 12:30 A | 2016-05-16 16:30 A |  | 0% → 100% | 0.56d → none |  |
| 50 | Diagramas de clases | 2016-05-16 16:30 A | 2016-05-16 17:30 A |  | 0% → 100% | 0.56d → none |  |
| 51 | Diagramas de componentes | 2016-05-16 17:30 A | 2016-05-16 18:30 A |  | 0% → 100% | 0.56d → none |  |
| 52 | Diagramas de despliegues | 2016-05-16 18:30 A | 2016-05-17 10:30 A |  | 0% → 100% | 0.56d → none |  |
| 53 | Mapa de navegación | 2016-05-17 10:30 A | 2016-05-17 11:30 A |  | 0% → 100% | 0.56d → none |  |
| 54 | Maquetación | 2016-05-17 11:30 A | 2016-05-18 09:30 A |  | 0% → 100% | 0.56d → none |  |
| 55 | **Diseño de diagramas de la base de datos** | 2016-05-13 16:30 → 2016-05-13 15:30 A | 2016-05-18 11:30 A | 2.62d → 2.75d | 0% → 100% | 25.56d → none |  |
| 56 | Diagrama E-R | 2016-05-18 09:30 A | 2016-05-18 10:30 A |  | 0% → 100% | 0.56d → none |  |
| 57 | Diagrama relacional | 2016-05-18 10:30 A | 2016-05-18 11:30 A |  | 0% → 100% | 0.56d → none |  |
| 58 | Entrega de la arquitectura del sistema, casos de uso, secuencia, clases, componentes, despliegues, mapa de navegación y maquetación. | 2016-05-13 16:30 → 2016-05-13 15:30 A | 2016-05-13 16:30 → 2016-05-13 15:30 A |  | 0% → 100% | 3.19d → none |  |
| 59 | **Codificación** | 2016-05-18 11:30 A | 2016-06-01 09:30 A |  | 0% → 100% | 25.56d → none |  |
| 60 | Codificación de la base de datos | 2016-05-18 11:30 A | 2016-05-18 16:30 A |  | 0% → 100% | 0.56d → none |  |
| 61 | **Módulo clientes** | 2016-05-18 16:30 A | 2016-05-20 11:00 A |  | 0% → 100% | 25.56d → none |  |
| 62 | Interfaz | 2016-05-18 16:30 A | 2016-05-18 17:30 A |  | 0% → 100% | 0.56d → none |  |
| 63 | Clases de clientes | 2016-05-18 17:30 A | 2016-05-19 15:30 A |  | 0% → 100% | 0.56d → none |  |
| 64 | Conexión a BD | 2016-05-19 15:30 A | 2016-05-19 16:00 A |  | 0% → 100% | 0.56d → none |  |
| 65 | Alta de clientes | 2016-05-19 16:00 A | 2016-05-19 16:30 A |  | 0% → 100% | 0.56d → none |  |
| 66 | Baja de clientes | 2016-05-19 16:30 A | 2016-05-19 17:00 A |  | 0% → 100% | 0.56d → none |  |
| 67 | Actualización de clientes | 2016-05-19 17:00 A | 2016-05-19 18:00 A |  | 0% → 100% | 0.56d → none |  |
| 68 | Consultas de clientes | 2016-05-19 18:00 A | 2016-05-19 19:00 A |  | 0% → 100% | 0.56d → none |  |
| 69 | Reportes de clientes | 2016-05-20 09:00 A | 2016-05-20 11:00 A |  | 0% → 100% | 0.56d → none |  |
| 70 | **Módulo productos** | 2016-05-20 11:00 A | 2016-05-24 12:30 A |  | 0% → 100% | 25.56d → none |  |
| 71 | Interfaz | 2016-05-20 11:00 A | 2016-05-20 12:30 A |  | 0% → 100% | 0.56d → none |  |

| ID | Task | Start | Finish | Duration | Complete | Total float | Predecessors |
| --- | --- | --- | --- | --- | --- | --- | --- |
| 72 | Clases de productos | 2016-05-20 12:30 A | 2016-05-23 12:30 A |  | 0% → 100% | 0.56d → none |  |
| 73 | Conexión a BD | 2016-05-23 12:30 A | 2016-05-23 13:00 A |  | 0% → 100% | 0.56d → none |  |
| 74 | Alta de productos | 2016-05-23 15:00 A | 2016-05-23 16:00 A |  | 0% → 100% | 0.56d → none |  |
| 75 | Baja de productos | 2016-05-23 16:00 A | 2016-05-23 17:00 A |  | 0% → 100% | 0.56d → none |  |
| 76 | Actualización de productos | 2016-05-23 17:00 A | 2016-05-23 18:30 A |  | 0% → 100% | 0.56d → none |  |
| 77 | Consultas de productos | 2016-05-23 18:30 A | 2016-05-24 10:00 A |  | 0% → 100% | 0.56d → none |  |
| 78 | Reportes de productos | 2016-05-24 10:00 A | 2016-05-24 12:30 A |  | 0% → 100% | 0.56d → none |  |
| 79 | **Módulo ventas** | 2016-05-24 12:30 A | 2016-05-25 19:00 A |  | 0% → 100% | 25.56d → none |  |
| 80 | Interfaz | 2016-05-24 12:30 A | 2016-05-24 15:30 A |  | 0% → 100% | 0.56d → none |  |
| 81 | Clases de ventas | 2016-05-24 15:30 A | 2016-05-25 11:30 A |  | 0% → 100% | 0.56d → none |  |
| 82 | Conexión a BD | 2016-05-25 11:30 A | 2016-05-25 12:00 A |  | 0% → 100% | 0.56d → none |  |
| 83 | Alta de ventas | 2016-05-25 12:00 A | 2016-05-25 12:30 A |  | 0% → 100% | 0.56d → none |  |
| 84 | Baja de ventas | 2016-05-25 12:30 A | 2016-05-25 13:00 A |  | 0% → 100% | 0.56d → none |  |
| 85 | Actualización de ventas | 2016-05-25 15:00 A | 2016-05-25 16:00 A |  | 0% → 100% | 0.56d → none |  |
| 86 | Consultas de ventas | 2016-05-25 16:00 A | 2016-05-25 17:00 A |  | 0% → 100% | 0.56d → none |  |
| 87 | Reportes de ventas | 2016-05-25 17:00 A | 2016-05-25 19:00 A |  | 0% → 100% | 0.56d → none |  |
| 88 | **Módulo categoría** | 2016-05-26 09:00 A | 2016-05-27 12:30 A |  | 0% → 100% | 25.56d → none |  |
| 89 | Interfaz | 2016-05-26 09:00 A | 2016-05-26 10:00 A |  | 0% → 100% | 0.56d → none |  |
| 90 | Clases de categoría | 2016-05-26 10:00 A | 2016-05-26 17:00 A |  | 0% → 100% | 0.56d → none |  |
| 91 | Conexión a BD | 2016-05-26 17:00 A | 2016-05-26 17:30 A |  | 0% → 100% | 0.56d → none |  |
| 92 | Alta de categoría | 2016-05-26 17:30 A | 2016-05-26 18:00 A |  | 0% → 100% | 0.56d → none |  |
| 93 | Baja de categoría | 2016-05-26 18:00 A | 2016-05-26 18:30 A |  | 0% → 100% | 0.56d → none |  |
| 94 | Actualización de categoría | 2016-05-26 18:30 A | 2016-05-27 09:30 A |  | 0% → 100% | 0.56d → none |  |
| 95 | Consultas de categoría | 2016-05-27 09:30 A | 2016-05-27 10:30 A |  | 0% → 100% | 0.56d → none |  |
| 96 | Reportes de categoría | 2016-05-27 10:30 A | 2016-05-27 12:30 A |  | 0% → 100% | 0.56d → none |  |
| 97 | **Módulo de provedores** | 2016-05-27 12:30 A | 2016-05-31 16:00 A |  | 0% → 100% | 25.56d → none |  |
| 98 | Interfaz | 2016-05-27 12:30 A | 2016-05-27 16:00 A |  | 0% → 100% | 0.56d → none |  |
| 99 | Clases de proveedores | 2016-05-27 16:00 A | 2016-05-30 16:00 A |  | 0% → 100% | 0.56d → none |  |
| 100 | Conexión a BD | 2016-05-30 16:00 A | 2016-05-30 16:30 A |  | 0% → 100% | 0.56d → none |  |
| 101 | Alta de proveedores | 2016-05-30 16:30 A | 2016-05-30 17:30 A |  | 0% → 100% | 0.56d → none |  |
| 102 | Baja de proveedores | 2016-05-30 17:30 A | 2016-05-30 18:30 A |  | 0% → 100% | 0.56d → none |  |
| 103 | Actualización de proveedores | 2016-05-30 18:30 A | 2016-05-31 10:00 A |  | 0% → 100% | 0.56d → none |  |
| 104 | Consultas de proveedores | 2016-05-31 10:00 A | 2016-05-31 11:30 A |  | 0% → 100% | 0.56d → none |  |
| 105 | Reportes de proveedores | 2016-05-31 11:30 A | 2016-05-31 16:00 A |  | 0% → 100% | 0.56d → none |  |
| 106 | **Login** | 2016-05-31 16:00 A | 2016-06-01 09:30 A |  | 0% → 100% | 25.56d → none |  |
| 107 | Interfaz | 2016-05-31 16:00 A | 2016-05-31 16:30 A |  | 0% → 100% | 0.56d → none |  |
| 108 | Validación | 2016-05-31 16:30 A | 2016-06-01 09:30 A |  | 0% → 100% | 0.56d → none |  |
| 109 | Entrega de base de datos, reporte de módulo clientes, productos, ventas, categoría, proveedores y login. | 2016-05-18 11:30 A | 2016-05-18 11:30 A |  | 0% → 100% | 10.31d → none |  |
| 110 | **Pruebas** | 2016-06-01 09:30 A | 2016-06-09 10:30 A |  | 0% → 100% | 25.56d → none |  |
| 111 | **Pruebas de caja blanca** | 2016-06-01 09:30 A | 2016-06-09 10:30 A |  | 0% → 100% | 25.56d → none |  |
| 112 | **Módulo de clientes** | 2016-06-01 09:30 A | 2016-06-02 09:30 A |  | 0% → 100% | 25.56d → none |  |
| 113 | Puebas unitarias | 2016-06-01 09:30 A | 2016-06-01 15:30 A |  | 0% → 100% | 0.56d → none |  |
| 114 | Pruebas de módulo | 2016-06-01 15:30 A | 2016-06-02 09:30 A |  | 0% → 100% | 0.56d → none |  |
| 115 | **Módulo de productos** | 2016-06-02 09:30 A | 2016-06-02 18:30 A |  | 0% → 100% | 25.56d → none |  |
| 116 | Pruebas de desempeño | 2016-06-02 09:30 A | 2016-06-02 15:30 A |  | 0% → 100% | 0.56d → none |  |
| 117 | Pruebas de regresion | 2016-06-02 15:30 A | 2016-06-02 18:30 A |  | 0% → 100% | 0.56d → none |  |
| 118 | **Módulo ventas** | 2016-06-02 18:30 A | 2016-06-03 12:30 A |  | 0% → 100% | 25.56d → none |  |
| 119 | Pruebas de módulo | 2016-06-02 18:30 A | 2016-06-03 12:30 A |  | 0% → 100% | 0.56d → none |  |
| 120 | **Módulo categoría** | 2016-06-03 12:30 A | 2016-06-03 18:30 A |  | 0% → 100% | 25.56d → none |  |
| 121 | Pruebas de desempeño | 2016-06-03 12:30 A | 2016-06-03 18:30 A |  | 0% → 100% | 0.56d → none |  |
| 122 | **Módulo proveedores** | 2016-06-03 18:30 A | 2016-06-06 18:30 A |  | 0% → 100% | 25.56d → none |  |
| 123 | Pruebas unitarias | 2016-06-03 18:30 A | 2016-06-06 12:30 A |  | 0% → 100% | 0.56d → none |  |
| 124 | Pruebas de desempeño | 2016-06-06 12:30 A | 2016-06-06 18:30 A |  | 0% → 100% | 0.56d → none |  |
| 125 | **Login** | 2016-06-06 18:30 A | 2016-06-08 10:30 A |  | 0% → 100% | 25.56d → none |  |
| 126 | Pruebas de stress | 2016-06-06 18:30 A | 2016-06-07 12:30 A |  | 0% → 100% | 0.56d → none |  |
| 127 | Pruebas de carga | 2016-06-07 12:30 A | 2016-06-08 10:30 A |  | 0% → 100% | 0.56d → none |  |
| 128 | Pruebas del sistema | 2016-06-08 10:30 A | 2016-06-09 10:30 A |  | 0% → 100% | 0.56d → none |  |
| 129 | Entrega de resultados de pruebas de módulo de clientes, productos, ventas, categoría, proveedores y login. | 2016-06-01 09:30 A | 2016-06-01 09:30 A |  | 0% → 100% | 6.69d → none |  |
| 130 | **Iteración 2** | 2016-06-09 10:30 A | 2016-07-01 17:30 → 2016-07-01 11:00 A | 16.62d → 16.06d | 0% → 100% | 25.56d → none |  |
| 131 | **Análisis** | 2016-06-09 10:30 A | 2016-06-14 11:00 → 2016-06-13 17:00 A (-1d) | 3.06d → 2.56d | 0% → 100% | 25.56d → none |  |
| 132 | **Elicitación** | 2016-06-09 10:30 A | 2016-06-14 11:00 → 2016-06-13 17:00 A (-1d) | 3.06d → 2.56d | 0% → 100% | 25.56d → none |  |
| 133 | Identificar procesos del sistema | 2016-06-09 10:30 A | 2016-06-09 18:30 A |  | 0% → 100% | 25.56d → none |  |
| 134 | Identificar requerimientos funcionales | 2016-06-09 18:30 A | 2016-06-10 16:30 A |  | 0% → 100% | 25.56d → none |  |
| 135 | Identificar requerimientos no funcionales | 2016-06-10 16:30 A | 2016-06-13 10:30 A |  | 0% → 100% | 25.56d → none |  |
| 136 | **Especificación** | 2016-06-13 10:30 → 2016-06-10 16:30 A (-3d) | 2016-06-13 18:30 → 2016-06-13 12:30 A |  | 0% → 100% | 25.56d → none |  |
| 137 | Evaluación de requerimientos | 2016-06-13 10:30 → 2016-06-10 16:30 A (-3d) | 2016-06-13 11:30 → 2016-06-10 17:30 A (-3d) |  | 0% → 100% | 25.56d → none | 135 → 135FS-4h |
| 138 | SRS | 2016-06-13 11:30 → 2016-06-10 17:30 A (-3d) | 2016-06-13 18:30 → 2016-06-13 12:30 A |  | 0% → 100% | 25.56d → none |  |
| 139 | **Gestión de requerimientos** | 2016-06-13 18:30 → 2016-06-13 12:30 A | 2016-06-14 11:00 → 2016-06-13 17:00 A (-1d) |  | 0% → 100% | 25.56d → none | 136 → 136FS-1h |
| 140 | Priorizar los requerimientos | 2016-06-13 18:30 → 2016-06-13 12:30 A | 2016-06-14 09:30 → 2016-06-13 15:30 A (-1d) |  | 0% → 100% | 25.56d → none |  |
| 141 | Almacenar en repositorio | 2016-06-14 09:30 → 2016-06-13 15:30 A (-1d) | 2016-06-14 10:00 → 2016-06-13 16:00 A (-1d) |  | 0% → 100% | 25.56d → none |  |

| ID | Task | Start | Finish | Duration | Complete | Total float | Predecessors |
| --- | --- | --- | --- | --- | --- | --- | --- |
| 142 | Asignar a desarrolladores de software | 2016-06-14 10:00 → 2016-06-13 16:00 A (-1d) | 2016-06-14 11:00 → 2016-06-13 17:00 A (-1d) |  | 0% → 100% | 25.56d → none |  |
| 143 | Entrega de procesos del sistema y SRS | 2016-06-14 11:00 → 2016-06-13 17:00 A (-1d) | 2016-06-14 11:00 → 2016-06-13 17:00 A (-1d) |  | 0% → 100% | 25.56d → none |  |
| 144 | **Planificación** | 2016-06-14 11:00 → 2016-06-13 17:00 A (-1d) | 2016-06-15 17:00 → 2016-06-15 10:30 A | 1.5d → 1.44d | 0% → 100% | 25.56d → none | 131 → 131FS-0.5h |
| 145 | Actualizar plan de proyecto | 2016-06-14 11:00 → 2016-06-13 17:00 A (-1d) | 2016-06-14 12:00 → 2016-06-13 18:00 A (-1d) |  | 0% → 100% | 25.56d → none |  |
| 146 | **Estimación** | 2016-06-14 12:00 → 2016-06-13 18:00 A (-1d) | 2016-06-14 17:00 → 2016-06-14 11:00 A |  | 0% → 100% | 25.56d → none |  |
| 147 | Actualizar diccionario del WBS | 2016-06-14 12:00 → 2016-06-13 18:00 A (-1d) | 2016-06-14 16:00 → 2016-06-14 10:00 A |  | 0% → 100% | 25.56d → none |  |
| 148 | Actualizar costos | 2016-06-14 16:00 → 2016-06-14 10:00 A | 2016-06-14 17:00 → 2016-06-14 11:00 A |  | 0% → 100% | 25.56d → none |  |
| 149 | **Riesgos** | 2016-06-14 17:00 → 2016-06-14 11:00 A | 2016-06-15 16:00 → 2016-06-15 09:30 A | 0.88d → 0.81d | 0% → 100% | 25.56d → none | 146 → 146FS-1h |
| 150 | Identificación de nuevos riesgos | 2016-06-14 17:00 → 2016-06-14 11:00 A | 2016-06-15 11:00 → 2016-06-14 17:00 A (-1d) |  | 0% → 100% | 25.56d → none |  |
| 151 | Asignación de prioridades | 2016-06-15 11:00 → 2016-06-14 17:00 A (-1d) | 2016-06-15 12:00 → 2016-06-14 18:00 A (-1d) |  | 0% → 100% | 25.56d → none |  |
| 152 | Plan de mitigación y contingencia | 2016-06-15 12:00 → 2016-06-14 17:30 A (-1d) | 2016-06-15 16:00 → 2016-06-15 09:30 A |  | 0% → 100% | 25.56d → none | 151 → 151FS-0.5h |
| 153 | **Aseguramiento de la calidad** | 2016-06-15 16:00 → 2016-06-15 09:30 A | 2016-06-15 17:00 → 2016-06-15 10:30 A |  | 0% → 100% | 25.56d → none |  |
| 154 | Junta de arranque de construcción | 2016-06-15 16:00 → 2016-06-15 09:30 A | 2016-06-15 17:00 → 2016-06-15 10:30 A |  | 0% → 100% | 25.56d → none |  |
| 155 | Entrega del nuevo plan del proyecto, actualización del WBS, nuevos riesgos, prioridades de los riesgos, nuevo plan de mitigación y contingencia y junta de arranque de construcción | 2016-06-15 16:00 → 2016-06-15 09:30 A | 2016-06-15 16:00 → 2016-06-15 09:30 A |  | 0% → 100% | 25.69d → none |  |
| 156 | **Diseño** | 2016-06-15 17:00 → 2016-06-15 10:30 A | 2016-06-17 10:00 → 2016-06-16 15:30 A (-1d) |  | 0% → 100% | 25.56d → none |  |
| 157 | Diagramas de caso de uso | 2016-06-15 17:00 → 2016-06-15 10:30 A | 2016-06-16 10:00 → 2016-06-15 15:30 A (-1d) |  | 0% → 100% | 25.56d → none |  |
| 158 | Diagramas de secuencia | 2016-06-16 10:00 → 2016-06-15 15:30 A (-1d) | 2016-06-16 11:00 → 2016-06-15 16:30 A (-1d) |  | 0% → 100% | 25.56d → none |  |
| 159 | Actualizar diagramas de componentes | 2016-06-16 11:00 → 2016-06-15 16:30 A (-1d) | 2016-06-16 12:00 → 2016-06-15 17:30 A (-1d) |  | 0% → 100% | 25.56d → none |  |
| 160 | Diagramas de despliegues | 2016-06-16 12:00 → 2016-06-15 17:30 A (-1d) | 2016-06-16 13:00 → 2016-06-15 18:30 A (-1d) |  | 0% → 100% | 25.56d → none |  |
| 161 | Mapa de navegación | 2016-06-16 15:00 → 2016-06-15 18:30 A (-1d) | 2016-06-16 16:00 → 2016-06-16 09:30 A |  | 0% → 100% | 25.56d → none |  |
| 162 | Maquetación | 2016-06-16 16:00 → 2016-06-16 09:30 A | 2016-06-17 10:00 → 2016-06-16 15:30 A (-1d) |  | 0% → 100% | 25.56d → none |  |
| 163 | Entrega de nuevos casos de uso, de secuencia, componentes, despliegues del mapa de navegación y de la maquetación | 2016-06-15 17:00 → 2016-06-15 10:30 A | 2016-06-15 17:00 → 2016-06-15 10:30 A |  | 0% → 100% | 26.94d → none |  |
| 164 | **Codificación** | 2016-06-17 10:00 → 2016-06-16 15:30 A (-1d) | 2016-06-27 09:30 → 2016-06-24 13:00 A (-3d) |  | 0% → 100% | 25.56d → none |  |
| 165 | **Módulo dirección** | 2016-06-17 10:00 → 2016-06-16 15:30 A (-1d) | 2016-06-20 11:30 → 2016-06-17 17:00 A (-3d) |  | 0% → 100% | 25.56d → none |  |
| 166 | Interfaz | 2016-06-17 10:00 → 2016-06-16 15:30 A (-1d) | 2016-06-17 11:00 → 2016-06-16 16:30 A (-1d) |  | 0% → 100% | 0.56d → none |  |
| 167 | Clases de dirección | 2016-06-17 11:00 → 2016-06-16 16:30 A (-1d) | 2016-06-17 12:00 → 2016-06-16 17:30 A (-1d) |  | 0% → 100% | 0.56d → none |  |
| 168 | Conexión a BD | 2016-06-17 12:00 → 2016-06-16 17:30 A (-1d) | 2016-06-17 12:30 → 2016-06-16 18:00 A (-1d) |  | 0% → 100% | 0.56d → none |  |
| 169 | Alta de dirección | 2016-06-17 12:30 → 2016-06-16 18:00 A (-1d) | 2016-06-17 16:00 → 2016-06-17 09:30 A |  | 0% → 100% | 0.56d → none |  |
| 170 | Baja de dirección | 2016-06-17 16:00 → 2016-06-17 09:30 A | 2016-06-17 17:30 → 2016-06-17 11:00 A |  | 0% → 100% | 0.56d → none |  |
| 171 | Actualización de dirección | 2016-06-17 17:30 → 2016-06-17 11:00 A | 2016-06-20 09:30 → 2016-06-17 13:00 A (-3d) |  | 0% → 100% | 0.56d → none |  |
| 172 | Consultas de dirección | 2016-06-20 09:30 → 2016-06-17 15:00 A (-3d) | 2016-06-20 10:30 → 2016-06-17 16:00 A (-3d) |  | 0% → 100% | 0.56d → none |  |
| 173 | Reportes de dirección | 2016-06-20 10:30 → 2016-06-17 16:00 A (-3d) | 2016-06-20 11:30 → 2016-06-17 17:00 A (-3d) |  | 0% → 100% | 0.56d → none |  |
| 174 | **Módulo deudascobrar** | 2016-06-20 11:30 → 2016-06-17 17:00 A (-3d) | 2016-06-21 13:00 → 2016-06-20 18:30 A (-1d) |  | 0% → 100% | 25.56d → none |  |
| 175 | Interfaz | 2016-06-20 11:30 → 2016-06-17 17:00 A (-3d) | 2016-06-20 12:30 → 2016-06-17 18:00 A (-3d) |  | 0% → 100% | 0.56d → none |  |
| 176 | Clases de deudascobrar | 2016-06-20 12:30 → 2016-06-17 18:00 A (-3d) | 2016-06-20 15:30 → 2016-06-17 19:00 A (-3d) |  | 0% → 100% | 0.56d → none |  |
| 177 | Conexión a BD | 2016-06-20 15:30 → 2016-06-20 09:00 A | 2016-06-20 16:00 → 2016-06-20 09:30 A |  | 0% → 100% | 0.56d → none |  |
| 178 | Alta de deudascobrar | 2016-06-20 16:00 → 2016-06-20 09:30 A | 2016-06-20 17:30 → 2016-06-20 11:00 A |  | 0% → 100% | 0.56d → none |  |
| 179 | Baja de deudascobrar | 2016-06-20 17:30 → 2016-06-20 11:00 A | 2016-06-20 19:00 → 2016-06-20 12:30 A |  | 0% → 100% | 0.56d → none |  |
| 180 | Actualización de deudascobrar | 2016-06-21 09:00 → 2016-06-20 12:30 A (-1d) | 2016-06-21 11:00 → 2016-06-20 16:30 A (-1d) |  | 0% → 100% | 0.56d → none |  |
| 181 | Consultas de deudascobrar | 2016-06-21 11:00 → 2016-06-20 16:30 A (-1d) | 2016-06-21 12:00 → 2016-06-20 17:30 A (-1d) |  | 0% → 100% | 0.56d → none |  |
| 182 | Reportes de deudascobrar | 2016-06-21 12:00 → 2016-06-20 17:30 A (-1d) | 2016-06-21 13:00 → 2016-06-20 18:30 A (-1d) |  | 0% → 100% | 0.56d → none |  |
| 183 | **Módulo deudaspagar** | 2016-06-21 15:00 → 2016-06-20 18:30 A (-1d) | 2016-06-22 16:30 → 2016-06-22 10:00 A |  | 0% → 100% | 25.56d → none |  |
| 184 | Interfaz | 2016-06-21 15:00 → 2016-06-20 18:30 A (-1d) | 2016-06-21 16:00 → 2016-06-21 09:30 A |  | 0% → 100% | 0.56d → none |  |
| 185 | Clases de deudaspagar | 2016-06-21 16:00 → 2016-06-21 09:30 A | 2016-06-21 17:00 → 2016-06-21 10:30 A |  | 0% → 100% | 0.56d → none |  |
| 186 | Conexión a BD | 2016-06-21 17:00 → 2016-06-21 10:30 A | 2016-06-21 17:30 → 2016-06-21 11:00 A |  | 0% → 100% | 0.56d → none |  |
| 187 | Alta de deudaspagar | 2016-06-21 17:30 → 2016-06-21 11:00 A | 2016-06-21 19:00 → 2016-06-21 12:30 A |  | 0% → 100% | 0.56d → none |  |
| 188 | Baja de deudaspagar | 2016-06-22 09:00 → 2016-06-21 12:30 A (-1d) | 2016-06-22 10:30 → 2016-06-21 16:00 A (-1d) |  | 0% → 100% | 0.56d → none |  |
| 189 | Actualización de deudaspagar | 2016-06-22 10:30 → 2016-06-21 16:00 A (-1d) | 2016-06-22 12:30 → 2016-06-21 18:00 A (-1d) |  | 0% → 100% | 0.56d → none |  |
| 190 | Consultas de deudaspagar | 2016-06-22 12:30 → 2016-06-21 18:00 A (-1d) | 2016-06-22 15:30 → 2016-06-21 19:00 A (-1d) |  | 0% → 100% | 0.56d → none |  |
| 191 | Reportes de deudaspagar | 2016-06-22 15:30 → 2016-06-22 09:00 A | 2016-06-22 16:30 → 2016-06-22 10:00 A |  | 0% → 100% | 0.56d → none |  |
| 192 | **Módulo abonoclientes** | 2016-06-22 16:30 → 2016-06-22 10:00 A | 2016-06-23 18:00 → 2016-06-23 11:30 A |  | 0% → 100% | 25.56d → none |  |
| 193 | Interfaz | 2016-06-22 16:30 → 2016-06-22 10:00 A | 2016-06-22 17:30 → 2016-06-22 11:00 A |  | 0% → 100% | 0.56d → none |  |
| 194 | Clases de abonoclientes | 2016-06-22 17:30 → 2016-06-22 11:00 A | 2016-06-22 18:30 → 2016-06-22 12:00 A |  | 0% → 100% | 0.56d → none |  |
| 195 | Conexión a BD | 2016-06-22 18:30 → 2016-06-22 12:00 A | 2016-06-22 19:00 → 2016-06-22 12:30 A |  | 0% → 100% | 0.56d → none |  |
| 196 | Alta de abonoclientes | 2016-06-23 09:00 → 2016-06-22 12:30 A (-1d) | 2016-06-23 10:30 → 2016-06-22 16:00 A (-1d) |  | 0% → 100% | 0.56d → none |  |
| 197 | Baja de abonoclientes | 2016-06-23 10:30 → 2016-06-22 16:00 A (-1d) | 2016-06-23 12:00 → 2016-06-22 17:30 A (-1d) |  | 0% → 100% | 0.56d → none |  |
| 198 | Actualización de abonoclientes | 2016-06-23 12:00 → 2016-06-22 17:30 A (-1d) | 2016-06-23 16:00 → 2016-06-23 09:30 A |  | 0% → 100% | 0.56d → none |  |
| 199 | Consultas de abonoclientes | 2016-06-23 16:00 → 2016-06-23 09:30 A | 2016-06-23 17:00 → 2016-06-23 10:30 A |  | 0% → 100% | 0.56d → none |  |
| 200 | Reportes de abonoclientes | 2016-06-23 17:00 → 2016-06-23 10:30 A | 2016-06-23 18:00 → 2016-06-23 11:30 A |  | 0% → 100% | 0.56d → none |  |
| 201 | **Módulo abonoproveedores** | 2016-06-23 18:00 → 2016-06-23 11:30 A | 2016-06-27 09:30 → 2016-06-24 13:00 A (-3d) |  | 0% → 100% | 25.56d → none |  |
| 202 | Interfaz | 2016-06-23 18:00 → 2016-06-23 11:30 A | 2016-06-23 19:00 → 2016-06-23 12:30 A |  | 0% → 100% | 0.56d → none |  |
| 203 | Clases de abonoproveedores | 2016-06-24 09:00 → 2016-06-23 12:30 A (-1d) | 2016-06-24 10:00 → 2016-06-23 15:30 A (-1d) |  | 0% → 100% | 0.56d → none |  |
| 204 | Conexión a BD | 2016-06-24 10:00 → 2016-06-23 15:30 A (-1d) | 2016-06-24 10:30 → 2016-06-23 16:00 A (-1d) |  | 0% → 100% | 0.56d → none |  |
| 205 | Alta de abonoproveedores | 2016-06-24 10:30 → 2016-06-23 16:00 A (-1d) | 2016-06-24 12:00 → 2016-06-23 17:30 A (-1d) |  | 0% → 100% | 0.56d → none |  |
| 206 | Baja de abonoproveedores | 2016-06-24 12:00 → 2016-06-23 17:30 A (-1d) | 2016-06-24 15:30 → 2016-06-23 19:00 A (-1d) |  | 0% → 100% | 0.56d → none |  |
| 207 | Actualización de abonoproveedores | 2016-06-24 15:30 → 2016-06-24 09:00 A | 2016-06-24 17:30 → 2016-06-24 11:00 A |  | 0% → 100% | 0.56d → none |  |
| 208 | Consultas de abonoproveedores | 2016-06-24 17:30 → 2016-06-24 11:00 A | 2016-06-24 18:30 → 2016-06-24 12:00 A |  | 0% → 100% | 0.56d → none |  |
| 209 | Reportes de abonoproveedores | 2016-06-24 18:30 → 2016-06-24 12:00 A | 2016-06-27 09:30 → 2016-06-24 13:00 A (-3d) |  | 0% → 100% | 0.56d → none |  |
| 210 | Entrega de reporte de módulo dirección, deudaspagar, deudascobrar, abonoclientes y abonoproveedores. | 2016-06-23 18:00 → 2016-06-23 11:30 A | 2016-06-23 18:00 → 2016-06-23 11:30 A |  | 0% → 100% | 1.75d → none |  |
| 211 | **Pruebas** | 2016-06-27 09:30 → 2016-06-24 13:00 A (-3d) | 2016-07-01 17:30 → 2016-07-01 11:00 A |  | 0% → 100% | 25.56d → none |  |

| ID | Task | Start | Finish | Duration | Complete | Total float | Predecessors |
| --- | --- | --- | --- | --- | --- | --- | --- |
| 212 | **Pruebas de caja blanca** | 2016-06-27 09:30 → 2016-06-24 13:00 A (-3d) | 2016-07-01 17:30 → 2016-07-01 11:00 A |  | 0% → 100% | 25.56d → none |  |
| 213 | **Modulo de usuarios** | 2016-06-27 09:30 → 2016-06-24 15:00 A (-3d) | 2016-06-28 09:30 → 2016-06-27 13:00 A (-1d) |  | 0% → 100% | 25.56d → none |  |
| 214 | Puebas unitarias | 2016-06-27 09:30 → 2016-06-24 15:00 A (-3d) | 2016-06-27 15:30 → 2016-06-24 19:00 A (-3d) |  | 0% → 100% | 0.56d → none |  |
| 215 | Pruebas de modulo | 2016-06-27 15:30 → 2016-06-27 09:00 A | 2016-06-28 09:30 → 2016-06-27 13:00 A (-1d) |  | 0% → 100% | 0.56d → none |  |
| 216 | **Modulo de productos** | 2016-06-28 09:30 → 2016-06-27 15:00 A (-1d) | 2016-06-28 18:30 → 2016-06-28 12:00 A |  | 0% → 100% | 25.56d → none |  |
| 217 | Pruebas de desempeño | 2016-06-28 09:30 → 2016-06-27 15:00 A (-1d) | 2016-06-28 15:30 → 2016-06-27 19:00 A (-1d) |  | 0% → 100% | 0.56d → none |  |
| 218 | Pruebas de regresion | 2016-06-28 15:30 → 2016-06-28 09:00 A | 2016-06-28 18:30 → 2016-06-28 12:00 A |  | 0% → 100% | 0.56d → none |  |
| 219 | **Módulo deudaspagar** | 2016-06-28 18:30 → 2016-06-28 12:00 A | 2016-06-29 12:30 → 2016-06-28 18:00 A (-1d) |  | 0% → 100% | 25.56d → none |  |
| 220 | Pruebas de módulo | 2016-06-28 18:30 → 2016-06-28 12:00 A | 2016-06-29 12:30 → 2016-06-28 18:00 A (-1d) |  | 0% → 100% | 0.56d → none |  |
| 221 | **Módulo abonoclientes** | 2016-06-29 12:30 → 2016-06-28 18:00 A (-1d) | 2016-06-29 18:30 → 2016-06-29 12:00 A |  | 0% → 100% | 25.56d → none |  |
| 222 | Pruebas de desempeño | 2016-06-29 12:30 → 2016-06-28 18:00 A (-1d) | 2016-06-29 18:30 → 2016-06-29 12:00 A |  | 0% → 100% | 0.56d → none |  |
| 223 | **Módulo abonoproveedores** | 2016-06-29 18:30 → 2016-06-29 12:00 A | 2016-06-30 17:30 → 2016-06-30 11:00 A |  | 0% → 100% | 25.56d → none |  |
| 224 | Pruebas de stress | 2016-06-29 18:30 → 2016-06-29 12:00 A | 2016-06-30 12:30 → 2016-06-29 18:00 A (-1d) |  | 0% → 100% | 0.56d → none |  |
| 225 | Pruebas de carga | 2016-06-30 12:30 → 2016-06-29 18:00 A (-1d) | 2016-06-30 17:30 → 2016-06-30 11:00 A |  | 0% → 100% | 0.56d → none |  |
| 226 | Pruebas del sistema | 2016-06-30 17:30 → 2016-06-30 11:00 A | 2016-07-01 17:30 → 2016-07-01 11:00 A |  | 0% → 100% | 0.56d → none |  |
| 227 | Entrega de resultados de pruebas de módulo de dirección, deudaspagar, deudascobrar, abonoclientes y abonoproveedores. | 2016-06-27 09:30 → 2016-06-24 13:00 A (-3d) | 2016-06-27 09:30 → 2016-06-24 13:00 A (-3d) |  | 0% → 100% | 5.31d → none |  |
| 228 | **Implementación** | 2016-07-01 17:30 → 2016-07-01 11:00 A | 2016-07-06 12:30 → 2016-07-05 13:00 (-1d) | 2.62d → 2.25d | 0% → 38% | 25.56d → 0d |  |
| 229 | Evaluación del hosting | 2016-07-01 17:30 → 2016-07-01 11:00 A | 2016-07-04 09:30 → 2016-07-01 13:00 A (-3d) |  | 0% → 100% | 0.56d → none |  |
| 230 | Implementar el sitio en el hosting | 2016-07-04 09:30 → 2016-07-01 15:00 A (-3d) | 2016-07-05 09:30 → 2016-07-04 13:00 (-1d) |  | 0% → 75% | 0.56d → 0d |  |
| 231 | Manual de usuario | 2016-07-05 09:30 → 2016-07-04 15:00 (-1d) | 2016-07-05 16:30 → 2016-07-05 10:00 |  |  | 0.56d → 0d |  |
| 232 | Capacitación | 2016-07-05 16:30 → 2016-07-04 17:00 (-1d) | 2016-07-05 18:30 → 2016-07-04 19:00 (-1d) |  |  | 0.56d → 0d | 231 → 231FS-3h |
| 233 | **Pruebas de caja blanca** | 2016-07-01 17:30 → 2016-07-01 11:00 | 2016-07-06 12:30 → 2016-07-05 13:00 (-1d) | 2.62d → 2.25d |  | 25.56d → 0d |  |
| 234 | Pruebas de rendimiento | 2016-07-05 18:30 → 2016-07-05 09:00 | 2016-07-06 10:30 → 2016-07-05 11:00 (-1d) |  |  | 0.56d → 0d |  |
| 235 | Pruebas de sistema | 2016-07-06 10:30 → 2016-07-05 11:00 (-1d) | 2016-07-06 12:30 → 2016-07-05 13:00 (-1d) |  |  | 0.56d → 0d |  |
| 236 | Entrega del manual de usuario | 2016-07-01 17:30 → 2016-07-01 11:00 | 2016-07-01 17:30 → 2016-07-01 11:00 |  |  | 3.19d → 2.25d |  |
| 237 | **Cierre del proyecto** | 2016-07-06 12:30 → 2016-07-05 13:00 (-1d) | 2016-07-07 12:30 → 2016-07-06 13:00 (-1d) |  |  | 25.56d → 0d |  |
| 238 | Carta de aceptación | 2016-07-06 12:30 → 2016-07-05 15:00 (-1d) | 2016-07-06 15:30 → 2016-07-05 16:00 (-1d) |  |  | 0.56d → 0d |  |
| 239 | Acta de cierre del proyecto | 2016-07-06 15:30 → 2016-07-05 16:00 (-1d) | 2016-07-06 16:30 → 2016-07-05 17:00 (-1d) |  |  | 0.56d → 0d |  |
| 240 | Evaluación de desempeño | 2016-07-06 16:30 → 2016-07-05 17:00 (-1d) | 2016-07-06 18:30 → 2016-07-05 19:00 (-1d) |  |  | 0.56d → 0d |  |
| 241 | Junta de lecciones aprendidas | 2016-07-06 18:30 → 2016-07-06 09:00 | 2016-07-07 09:30 → 2016-07-06 10:00 (-1d) |  |  | 0.56d → 0d |  |
| 242 | Revisión de adherencias de procesos | 2016-07-07 09:30 → 2016-07-06 10:00 (-1d) | 2016-07-07 10:30 → 2016-07-06 11:00 (-1d) |  |  | 0.56d → 0d |  |
| 243 | Liberación de los recursos | 2016-07-07 10:30 → 2016-07-06 11:00 (-1d) | 2016-07-07 11:30 → 2016-07-06 12:00 (-1d) |  |  | 0.56d → 0d |  |
| 244 | Informe final | 2016-07-07 11:30 → 2016-07-06 12:00 (-1d) | 2016-07-07 12:30 → 2016-07-06 13:00 (-1d) |  |  | 0.56d → 0d |  |
| 245 | Entrega de carta de aceptación, acta de cierre del proyecto, evaluación de desempeño, junta de lecciones aprendidas, adherencia de procesos e informe final. | 2016-07-06 12:30 → 2016-07-05 13:00 (-1d) | 2016-07-06 12:30 → 2016-07-05 13:00 (-1d) |  |  | 1.56d → 1d |  |
